# 新版本健康管理平台项目计划

How a schedule from MS Project changed from version to version. A marks actual dates.

## Version 1 (saved 2016-10-18)

| ID | WBS | Task | Duration | Start | Finish | Predecessors | Total float | Constraint |
| --- | --- | --- | --- | --- | --- | --- | --- | --- |
| 1 | 1 | **制定架构设计方案** | 9.5d | 2016-10-13 | 2016-10-25 |  | 35.5d |  |
| 2 |  | 讨论会 | 0.5d | 2016-10-13 | 2016-10-13 |  | 10.5d | start no earlier than 2016-10-13 |
| 3 |  | 与相关同事讨论并修改 | 3d | 2016-10-17 | 2016-10-19 |  | 5d | start no earlier than 2016-10-17 |
| 4 |  | 落实使用的技术框架与库 | 1d | 2016-10-21 | 2016-10-21 |  | 3d | start no earlier than 2016-10-21 |
| 5 |  | 制定代码规范 | 0.5d | 2016-10-21 | 2016-10-21 |  | 3.5d | start no earlier than 2016-10-21 |
| 6 | 1.5 | **对外API设计** | 2d | 2016-10-18 | 2016-10-19 |  | 39d |  |
| 7 |  | 接口梳理（疾病管理+健康管理） | 1d | 2016-10-18 | 2016-10-18 |  | 5d | start no earlier than 2016-10-18 |
| 8 |  | 设计 | 1d | 2016-10-19 | 2016-10-19 | 7 | 5d |  |
| 9 |  | 架构讨论 | 1d | 2016-10-24 | 2016-10-24 |  | 2d | start no earlier than 2016-10-24 |
| 10 |  | 评审会 | 0.5d | 2016-10-25 | 2016-10-25 |  | 1.5d | start no earlier than 2016-10-25 |
| 11 | 2 | **架构DEMO** | 7d | 2016-10-13 | 2016-10-20 |  | 38d |  |
| 12 |  | 集成shiro实现认证功能 | 1d | 2016-10-13 | 2016-10-13 |  | 10d | start no earlier than 2016-10-13 |
| 13 |  | 集成spring session支持分布式session | 1d | 2016-10-14 | 2016-10-14 |  | 9d |  |
| 14 |  | 集成分布式文件服务 | 1d | 2016-10-14 | 2016-10-14 |  | 9d |  |
| 15 |  | 集成分布式缓存redis | 1d | 2016-10-15 | 2016-10-15 |  | 6d | start no earlier than 2016-10-15 |
| 16 |  | 修改bug | 1.5d | 2016-10-17 | 2016-10-18 | 15 | 39d |  |
| 17 |  | 开发环境搭建文档 | 0.5d | 2016-10-18 | 2016-10-18 | 16 | 39d |  |
| 18 |  | 测试DEMO系统和检查文档 | 1d | 2016-10-18 | 2016-10-18 |  | 39d | start no earlier than 2016-10-18 |
| 19 |  | 系统完善 | 1d | 2016-10-19 | 2016-10-19 | 18 | 39d |  |
| 20 |  | 压力测试 | 1d | 2016-10-20 | 2016-10-20 |  | 4d | start no earlier than 2016-10-20 |
| 21 |  | 研发流程 | 0.5d | 2016-10-18 | 2016-10-18 |  | 6.5d | start no earlier than 2016-10-18 |
| 22 | 4 | **单点登录** | 7d | 2016-10-19 | 2016-10-27 |  | 33d |  |
| 23 |  | 学习区域注册中心方案 | 0.5d | 2016-10-19 | 2016-10-19 |  | 38.5d | start no earlier than 2016-10-19 |
| 24 |  | 了解各系统的认证与权限部分：母婴，健康管理，疾病管理，虚拟柜台，His | 1d | 2016-10-19 | 2016-10-20 | 23 | 38.5d | finish no earlier than 2016-10-19 |
| 25 |  | 设计方案 | 2d | 2016-10-26 | 2016-10-27 |  | 33d | start no earlier than 2016-10-26 |
| 26 | 5 | **数据库迁移** | 9d | 2016-10-18 | 2016-10-28 |  | 32d |  |
| 27 |  | 了解健康管理平台的数据库表 | 1d | 2016-10-18 | 2016-10-18 |  | 40d | start no earlier than 2016-10-18 |
| 28 |  | 详细设计 | 3d | 2016-10-26 | 2016-10-28 |  | 32d | start no earlier than 2016-10-26 |
| 29 |  | 需求分析 | 2d | 2016-10-31 | 2016-11-01 |  | 30d | start no earlier than 2016-10-31 |
| 30 | 7 | **设计** | 15d | 2016-11-01 | 2016-11-21 |  | 0d |  |
| 31 |  | 设计组件图 | 1d | 2016-11-01 | 2016-11-01 |  | 0d | start no earlier than 2016-11-01 |
| 32 |  | 类图 | 3d | 2016-11-02 | 2016-11-04 | 31 | 0d |  |
| 33 |  | 三方库封装 | 5d | 2016-11-02 | 2016-11-08 | 31 | 9d |  |
| 34 |  | 对外API设计 | 3d | 2016-11-02 | 2016-11-04 | 31 | 11d |  |
| 35 |  | 内部接口设计 | 10d | 2016-11-07 | 2016-11-18 | 32 | 0d |  |
| 36 |  | 设计评审 | 1d | 2016-11-21 | 2016-11-21 | 35 | 0d |  |
| 37 | 8 | **开发与测试** | 8d? | 2016-11-22 | 2016-12-01 |  | 0d |  |
| 38 |  | web应用 | 1d? | 2016-11-22 | 2016-11-22 | 36 | 0d |  |
| 39 |  | 数据库迁移 | 1d? | 2016-11-23 | 2016-11-23 | 38 | 0d |  |
| 40 |  | 对外API | 1d? | 2016-11-24 | 2016-11-24 | 39 | 0d |  |
| 41 |  | 集成测试 | 5d | 2016-11-25 | 2016-12-01 | 40 | 0d |  |
| 42 |  | 上线部署 | 5d | 2016-12-02 | 2016-12-08 | 41 | 0d |  |
| 43 |  | 试运行 | 3d | 2016-12-09 | 2016-12-13 | 42 | 0d |  |

## Version 2 (saved 2016-10-21)

Last finish stays 2016-12-13.

Added:

| ID | Task | Duration | Start | Finish | Predecessors | Constraint | Resources |
| --- | --- | --- | --- | --- | --- | --- | --- |
| 20 | 开发基准测试用的页面 | 0.5d | 2016-10-20 | 2016-10-20 | 19 |  | 闫兴魁 |
| 23 | 新功能开发：健康改善指南 | 0.5d | 2016-10-19 | 2016-10-19 |  | start no earlier than 2016-10-19 | 鞠文广 |

Changed:

| ID | Task | Start | Finish | Duration | Total float | Other |
| --- | --- | --- | --- | --- | --- | --- |
| 6 | **对外API设计** |  | 2016-10-19 → 2016-10-21 (+2d) | 2d → 4d | 39d → 37d |  |
| 8 | 重构方案 |  | 2016-10-19 → 2016-10-21 (+2d) | 1d → 3d | 5d → 37d | was named 设计 |
| 9 | 架构讨论 |  |  | 1d → 0.5d | 2d → 36.5d |  |
| 24 | **单点登录** | 2016-10-19 → 2016-10-20 (+1d) |  | 7d → 6d |  |  |
| 25 | 学习区域注册中心方案 | 2016-10-19 → 2016-10-20 (+1d) | 2016-10-19 → 2016-10-20 (+1d) |  | 38.5d → 37.5d | constraint start no earlier than 2016-10-19 → start no earlier than 2016-10-20 |
| 26 | 了解各系统的认证与权限部分：母婴，健康管理，疾病管理，虚拟柜台，His | 2016-10-19 → 2016-10-20 (+1d) | 2016-10-20 → 2016-10-21 (+1d) |  | 38.5d → 37.5d |  |
| 29 | 了解健康管理平台的数据库表:组织权限 |  |  |  |  | was named 了解健康管理平台的数据库表 |
